# Marina Commercial Tower - Baseline

How a schedule from Primavera P6 changed from version to version. A marks actual dates.

## Version 1 (data date 2024-01-08, saved 2026-11-01, file baseline_project.xer)

Note of the change: Add Primavera P6 XER progress dashboard generator

| ID | WBS | Task | Duration | Start | Finish | Predecessors | Total float |
| --- | --- | --- | --- | --- | --- | --- | --- |
|  | MCT | **Marina Commercial Tower** |  | 2024-01-08 | 2024-10-31 |  |  |
| M1000 |  | Notice to Proceed (NTP) | 0d | 2024-01-08 | 2024-01-08 |  | 0d |
|  | MCT.ENG | **Engineering & Approvals** |  | 2024-01-08 | 2024-03-08 |  |  |
| ENG1010 |  | Mobilization & Site Survey | 0d | 2024-01-08 | 2024-01-19 | M1000 | 5d |
| ENG1020 |  | Structural Foundation Shop Drawings | 0d | 2024-01-15 | 2024-02-02 | ENG1010 SS+5d | 0d |
| ENG1030 |  | Municipality Building Permit Approval | 0d | 2024-01-22 | 2024-02-16 | ENG1020 | 0d |
| ENG1040 |  | MEP Coordinated BIM Models | 0d | 2024-02-05 | 2024-03-08 |  | 12d |
|  | MCT.PROC | **Procurement & Subcontracts** |  | 2024-01-15 | 2024-04-12 |  |  |
| PRC1010 |  | Rebar & Structural Steel Supply Contract | 0d | 2024-01-15 | 2024-02-09 | ENG1010 | 0d |
| PRC1020 |  | Curtain Wall & Facade Long-Lead Procurement | 0d | 2024-02-12 | 2024-04-05 |  | 8d |
| PRC1030 |  | HVAC Chillers & Main Switchgear Order | 0d | 2024-02-19 | 2024-04-12 |  | 15d |
|  | MCT.SUB | **Substructure & Piling** |  | 2024-01-22 | 2024-05-03 |  |  |
| SUB1010 |  | Site Clearing & Shoring Installation | 0d | 2024-01-22 | 2024-02-09 | PRC1010 | 2d |
| SUB1020 |  | Mass Excavation & Dewatering | 0d | 2024-02-12 | 2024-03-01 | SUB1010 | 0d |
| M1010 |  | Foundation Approval Milestone | 0d | 2024-02-16 | 2024-02-16 | ENG1030 | 0d |
| SUB1030 |  | Cast Concrete Piles & Pile Caps | 0d | 2024-03-04 | 2024-03-22 | SUB1020 | 0d |
| SUB1040 |  | Raft Foundation Waterproofing & Casting | 0d | 2024-03-25 | 2024-04-12 | SUB1030 | 0d |
| SUB1050 |  | Basement Retaining Walls & SOG | 0d | 2024-04-15 | 2024-05-03 | SUB1040 | 0d |
|  | MCT.SUP | **Superstructure & Concrete** |  | 2024-05-06 | 2024-07-26 |  |  |
| SUP1010 |  | Ground Floor Columns & Elevated Slab | 0d | 2024-05-06 | 2024-05-24 | SUB1050 | 0d |
| SUP1020 |  | Floors 1 to 5 Concrete Framing | 0d | 2024-05-27 | 2024-07-05 | SUP1010 | 0d |
| SUP1030 |  | Roof Slab & Parapet Casting | 0d | 2024-07-08 | 2024-07-26 | SUP1020 | 0d |
| M1020 |  | Superstructure Topping Out | 0d | 2024-07-26 | 2024-07-26 | SUP1030 | 0d |
|  | MCT.MEP | **MEP First Fix & Rough-in** |  | 2024-03-18 | 2024-08-16 |  |  |
| MEP1010 |  | Basement Underground Drainage & Conduits | 0d | 2024-03-18 | 2024-04-05 | SUB1030 | 10d |
| MEP1020 |  | Electrical Risers & Plumbing Rough-in | 0d | 2024-06-03 | 2024-07-19 | SUP1020 SS+10d | 6d |
| MEP1030 |  | HVAC Ductwork & Fire Protection Piping | 0d | 2024-07-01 | 2024-08-16 | MEP1020 SS+20d | 4d |
|  | MCT.FIN | **Architectural Finishes** |  | 2024-07-29 | 2024-10-18 |  |  |
| FIN1010 |  | Exterior Glazing & Curtain Wall Panels | 0d | 2024-07-29 | 2024-09-20 | SUP1030 | 2d |
| FIN1020 |  | Internal CMU Partitions & Drywall Framing | 0d | 2024-08-05 | 2024-09-27 | SUP1020 SS+20d | 5d |
| FIN1030 |  | Flooring, Ceiling & Painting Works | 0d | 2024-09-02 | 2024-10-18 | FIN1020 | 0d |
|  | MCT.CLO | **Testing & Handover** |  | 2024-09-23 | 2024-10-31 |  |  |
| CLO1010 |  | MEP Testing, Adjusting & Commissioning | 0d | 2024-09-23 | 2024-10-18 | FIN1030, MEP1030 | 0d |
| CLO1020 |  | Civil Defense Inspection & Authority Sign-off | 0d | 2024-10-21 | 2024-10-31 | CLO1010 | 0d |
| M1030 |  | Project Substantial Completion | 0d | 2024-10-31 | 2024-10-31 | CLO1020 | 0d |

## Version 2 (data date 2024-01-08, saved 2026-11-08, file baseline_project.xer)

Note of the change: Merge 3efe6a9197fbfee64d2cbe5136a44dbcab682b22 into 61d7633b8f23d6c5707fb4b67482283300508bff

Last finish stays 2024-10-31.

Changed:

| ID | Task | Other |
| --- | --- | --- |
| M1000 | Notice to Proceed (NTP) | resources none → Project Management Staff |
| ENG1010 | Mobilization & Site Survey | resources none → Project Management Staff [320 h] |
| ENG1020 | Structural Foundation Shop Drawings | resources none → Project Management Staff [480 h] |
| ENG1030 | Municipality Building Permit Approval | resources none → Project Management Staff [640 h] |
| ENG1040 | MEP Coordinated BIM Models | resources none → Project Management Staff [800 h] |
| PRC1010 | Rebar & Structural Steel Supply Contract | resources none → Civil Construction Labor Crew [640 h] |
| PRC1020 | Curtain Wall & Facade Long-Lead Procurement | resources none → Finishes Craftsmen & Glaziers [1280 h] |
| PRC1030 | HVAC Chillers & Main Switchgear Order | resources none → MEP Electricians & Plumbers Crew [1280 h] |
| SUB1010 | Site Clearing & Shoring Installation | resources none → Civil Construction Labor Crew [480 h] |
| SUB1020 | Mass Excavation & Dewatering | resources none → Civil Construction Labor Crew [480 h] |
| M1010 | Foundation Approval Milestone | resources none → Project Management Staff |
| SUB1030 | Cast Concrete Piles & Pile Caps | resources none → Civil Construction Labor Crew [480 h] |
| SUB1040 | Raft Foundation Waterproofing & Casting | resources none → Civil Construction Labor Crew [480 h] |
| SUB1050 | Basement Retaining Walls & SOG | resources none → Civil Construction Labor Crew [480 h] |
| SUP1010 | Ground Floor Columns & Elevated Slab | resources none → Civil Construction Labor Crew [480 h] |
| SUP1020 | Floors 1 to 5 Concrete Framing | resources none → Civil Construction Labor Crew [960 h] |
| SUP1030 | Roof Slab & Parapet Casting | resources none → Civil Construction Labor Crew [480 h] |
| M1020 | Superstructure Topping Out | resources none → Project Management Staff |
| MEP1010 | Basement Underground Drainage & Conduits | resources none → MEP Electricians & Plumbers Crew [480 h] |
| MEP1020 | Electrical Risers & Plumbing Rough-in | resources none → MEP Electricians & Plumbers Crew [1120 h] |
| MEP1030 | HVAC Ductwork & Fire Protection Piping | resources none → MEP Electricians & Plumbers Crew [1120 h] |
| FIN1010 | Exterior Glazing & Curtain Wall Panels | resources none → Finishes Craftsmen & Glaziers [1280 h] |
| FIN1020 | Internal CMU Partitions & Drywall Framing | resources none → Finishes Craftsmen & Glaziers [1280 h] |
| FIN1030 | Flooring, Ceiling & Painting Works | resources none → Finishes Craftsmen & Glaziers [1120 h] |
| CLO1010 | MEP Testing, Adjusting & Commissioning | resources none → MEP Electricians & Plumbers Crew [640 h] |
| CLO1020 | Civil Defense Inspection & Authority Sign-off | resources none → Project Management Staff [288 h] |
| M1030 | Project Substantial Completion | resources none → Project Management Staff |

## Version 3 (data date 2024-03-29, saved 2026-11-01, file update_week12.xer)

Note of the change: Merge e3da794cc8d85dbb42969d084ddb4e51c857da39 into 61d7633b8f23d6c5707fb4b67482283300508bff

Last finish 2024-10-31 → 2024-11-15 (+15d). Complete tasks 0 → 9.

Changed:

| ID | Task | Start | Finish | Complete | Total float | Other |
| --- | --- | --- | --- | --- | --- | --- |
| MCT | **Marina Commercial Tower** |  | 2024-10-31 → 2024-11-15 (+15d) |  |  |  |
| M1000 | Notice to Proceed (NTP) | 2024-01-08 A | 2024-01-08 A | 0% → 100% | 0d → none | resources Project Management Staff → none |
| MCT.ENG | **Engineering & Approvals** |  | 2024-03-08 → 2024-03-15 (+7d) |  |  |  |
| ENG1010 | Mobilization & Site Survey | 2024-01-08 A | 2024-01-19 A | 0% → 100% | 5d → none | resources Project Management Staff [320 h] → none |
| ENG1020 | Structural Foundation Shop Drawings | 2024-01-15 A | 2024-02-02 → 2024-02-05 A (+3d) | 0% → 100% | 0d → none | resources Project Management Staff [480 h] → none |
| ENG1030 | Municipality Building Permit Approval | 2024-01-22 → 2024-01-25 A (+3d) | 2024-02-16 → 2024-02-23 A (+7d) | 0% → 100% | 0d → none | resources Project Management Staff [640 h] → none |
| ENG1040 | MEP Coordinated BIM Models | 2024-02-05 A | 2024-03-08 → 2024-03-15 A (+7d) | 0% → 100% | 12d → none | resources Project Management Staff [800 h] → none |
| MCT.PROC | **Procurement & Subcontracts** | 2024-01-15 → 2024-01-18 (+3d) | 2024-04-12 → 2024-04-16 (+4d) |  |  |  |
| PRC1010 | Rebar & Structural Steel Supply Contract | 2024-01-15 → 2024-01-18 A (+3d) | 2024-02-09 → 2024-02-16 A (+7d) | 0% → 100% | 0d → none | resources Civil Construction Labor Crew [640 h] → none |
| PRC1020 | Curtain Wall & Facade Long-Lead Procurement | 2024-02-12 A | 2024-04-05 → 2024-04-12 (+7d) | 0% → 65% | 8d → 4d | resources Finishes Craftsmen & Glaziers [1280 h] → none |
| PRC1030 | HVAC Chillers & Main Switchgear Order | 2024-02-19 A | 2024-04-12 → 2024-04-16 (+4d) | 0% → 45% | 15d → 10d | resources MEP Electricians & Plumbers Crew [1280 h] → none |
| MCT.SUB | **Substructure & Piling** | 2024-01-22 → 2024-01-24 (+2d) | 2024-05-03 → 2024-05-17 (+14d) |  |  |  |
| SUB1010 | Site Clearing & Shoring Installation | 2024-01-22 → 2024-01-24 A (+2d) | 2024-02-09 → 2024-02-14 A (+5d) | 0% → 100% | 2d → none | resources Civil Construction Labor Crew [480 h] → none |
| SUB1020 | Mass Excavation & Dewatering | 2024-02-12 → 2024-02-19 A (+7d) | 2024-03-01 → 2024-03-08 A (+7d) | 0% → 100% | 0d → none | resources Civil Construction Labor Crew [480 h] → none |
| M1010 | Foundation Approval Milestone | 2024-02-16 → 2024-02-23 A (+7d) | 2024-02-16 → 2024-02-23 A (+7d) | 0% → 100% | 0d → none | resources Project Management Staff → none |
| SUB1030 | Cast Concrete Piles & Pile Caps | 2024-03-04 → 2024-03-08 A (+4d) | 2024-03-22 → 2024-04-05 (+14d) | 0% → 80% | 0d → -11d | resources Civil Construction Labor Crew [480 h] → none |
| SUB1040 | Raft Foundation Waterproofing & Casting | 2024-03-25 → 2024-04-08 (+14d) | 2024-04-12 → 2024-04-26 (+14d) |  | 0d → -11d | resources Civil Construction Labor Crew [480 h] → none |
| SUB1050 | Basement Retaining Walls & SOG | 2024-04-15 → 2024-04-29 (+14d) | 2024-05-03 → 2024-05-17 (+14d) |  | 0d → -11d | resources Civil Construction Labor Crew [480 h] → none |
| MCT.SUP | **Superstructure & Concrete** | 2024-05-06 → 2024-05-20 (+14d) | 2024-07-26 → 2024-08-09 (+14d) |  |  |  |
| SUP1010 | Ground Floor Columns & Elevated Slab | 2024-05-06 → 2024-05-20 (+14d) | 2024-05-24 → 2024-06-07 (+14d) |  | 0d → -11d | resources Civil Construction Labor Crew [480 h] → none |
| SUP1020 | Floors 1 to 5 Concrete Framing | 2024-05-27 → 2024-06-10 (+14d) | 2024-07-05 → 2024-07-19 (+14d) |  | 0d → -11d | resources Civil Construction Labor Crew [960 h] → none |
| SUP1030 | Roof Slab & Parapet Casting | 2024-07-08 → 2024-07-22 (+14d) | 2024-07-26 → 2024-08-09 (+14d) |  | 0d → -11d | resources Civil Construction Labor Crew [480 h] → none |
| M1020 | Superstructure Topping Out | 2024-07-26 → 2024-08-09 (+14d) | 2024-07-26 → 2024-08-09 (+14d) |  | 0d → -11d | resources Project Management Staff → none |
| MCT.MEP | **MEP First Fix & Rough-in** | 2024-03-18 → 2024-03-20 (+2d) | 2024-08-16 → 2024-08-30 (+14d) |  |  |  |
| MEP1010 | Basement Underground Drainage & Conduits | 2024-03-18 → 2024-03-20 A (+2d) | 2024-04-05 → 2024-04-12 (+7d) | 0% → 30% | 10d → 6d | resources MEP Electricians & Plumbers Crew [480 h] → none |
| MEP1020 | Electrical Risers & Plumbing Rough-in | 2024-06-03 → 2024-06-17 (+14d) | 2024-07-19 → 2024-08-02 (+14d) |  | 6d → -5d | resources MEP Electricians & Plumbers Crew [1120 h] → none |
| MEP1030 | HVAC Ductwork & Fire Protection Piping | 2024-07-01 → 2024-07-15 (+14d) | 2024-08-16 → 2024-08-30 (+14d) |  | 4d → -7d | resources MEP Electricians & Plumbers Crew [1120 h] → none |
| MCT.FIN | **Architectural Finishes** | 2024-07-29 → 2024-08-12 (+14d) | 2024-10-18 → 2024-11-01 (+14d) |  |  |  |
| FIN1010 | Exterior Glazing & Curtain Wall Panels | 2024-07-29 → 2024-08-12 (+14d) | 2024-09-20 → 2024-10-04 (+14d) |  | 2d → -9d | resources Finishes Craftsmen & Glaziers [1280 h] → none |
| FIN1020 | Internal CMU Partitions & Drywall Framing | 2024-08-05 → 2024-08-19 (+14d) | 2024-09-27 → 2024-10-11 (+14d) |  | 5d → -6d | resources Finishes Craftsmen & Glaziers [1280 h] → none |
| FIN1030 | Flooring, Ceiling & Painting Works | 2024-09-02 → 2024-09-16 (+14d) | 2024-10-18 → 2024-11-01 (+14d) |  | 0d → -11d | resources Finishes Craftsmen & Glaziers [1120 h] → none |
| MCT.CLO | **Testing & Handover** | 2024-09-23 → 2024-10-07 (+14d) | 2024-10-31 → 2024-11-15 (+15d) |  |  |  |
| CLO1010 | MEP Testing, Adjusting & Commissioning | 2024-09-23 → 2024-10-07 (+14d) | 2024-10-18 → 2024-11-01 (+14d) |  | 0d → -11d | resources MEP Electricians & Plumbers Crew [640 h] → none |
| CLO1020 | Civil Defense Inspection & Authority Sign-off | 2024-10-21 → 2024-11-04 (+14d) | 2024-10-31 → 2024-11-15 (+15d) |  | 0d → -11d | resources Project Management Staff [288 h] → none |
| M1030 | Project Substantial Completion | 2024-10-31 → 2024-11-15 (+15d) | 2024-10-31 → 2024-11-15 (+15d) |  | 0d → -11d | resources Project Management Staff → none |

## Version 4 (data date 2024-03-29, saved 2026-11-08, file update_week12.xer)

Note of the change: Merge 3efe6a9197fbfee64d2cbe5136a44dbcab682b22 into 61d7633b8f23d6c5707fb4b67482283300508bff

Last finish stays 2024-11-15.

Changed:

| ID | Task | Other |
| --- | --- | --- |
| M1000 | Notice to Proceed (NTP) | resources none → Project Management Staff |
| ENG1010 | Mobilization & Site Survey | resources none → Project Management Staff [320 h] |
| ENG1020 | Structural Foundation Shop Drawings | resources none → Project Management Staff [480 h] |
| ENG1030 | Municipality Building Permit Approval | resources none → Project Management Staff [640 h] |
| ENG1040 | MEP Coordinated BIM Models | resources none → Project Management Staff [800 h] |
| PRC1010 | Rebar & Structural Steel Supply Contract | resources none → Civil Construction Labor Crew [640 h] |
| PRC1020 | Curtain Wall & Facade Long-Lead Procurement | resources none → Finishes Craftsmen & Glaziers [1280 h] |
| PRC1030 | HVAC Chillers & Main Switchgear Order | resources none → MEP Electricians & Plumbers Crew [1280 h] |
| SUB1010 | Site Clearing & Shoring Installation | resources none → Civil Construction Labor Crew [480 h] |
| SUB1020 | Mass Excavation & Dewatering | resources none → Civil Construction Labor Crew [480 h] |
| M1010 | Foundation Approval Milestone | resources none → Project Management Staff |
| SUB1030 | Cast Concrete Piles & Pile Caps | resources none → Civil Construction Labor Crew [480 h] |
| SUB1040 | Raft Foundation Waterproofing & Casting | resources none → Civil Construction Labor Crew [480 h] |
| SUB1050 | Basement Retaining Walls & SOG | resources none → Civil Construction Labor Crew [480 h] |
| SUP1010 | Ground Floor Columns & Elevated Slab | resources none → Civil Construction Labor Crew [480 h] |
| SUP1020 | Floors 1 to 5 Concrete Framing | resources none → Civil Construction Labor Crew [960 h] |
| SUP1030 | Roof Slab & Parapet Casting | resources none → Civil Construction Labor Crew [480 h] |
| M1020 | Superstructure Topping Out | resources none → Project Management Staff |
| MEP1010 | Basement Underground Drainage & Conduits | resources none → MEP Electricians & Plumbers Crew [480 h] |
| MEP1020 | Electrical Risers & Plumbing Rough-in | resources none → MEP Electricians & Plumbers Crew [1120 h] |
| MEP1030 | HVAC Ductwork & Fire Protection Piping | resources none → MEP Electricians & Plumbers Crew [1120 h] |
| FIN1010 | Exterior Glazing & Curtain Wall Panels | resources none → Finishes Craftsmen & Glaziers [1280 h] |
| FIN1020 | Internal CMU Partitions & Drywall Framing | resources none → Finishes Craftsmen & Glaziers [1280 h] |
| FIN1030 | Flooring, Ceiling & Painting Works | resources none → Finishes Craftsmen & Glaziers [1120 h] |
| CLO1010 | MEP Testing, Adjusting & Commissioning | resources none → MEP Electricians & Plumbers Crew [640 h] |
| CLO1020 | Civil Defense Inspection & Authority Sign-off | resources none → Project Management Staff [288 h] |
| M1030 | Project Substantial Completion | resources none → Project Management Staff |
